# Elite Hydro Constructions

Schedule from ProjectLibre, 2025-11-03 to 2028-04-25.

## Calendars

- Standard: Mon-Fri 08:00-12:00, 13:00-17:00; Sat-Sun off.

## Resources

| Resource | Cost per use |
| --- | --- |
| Unassigned |  |
| Project Director (PMC) |  |
| Project Manager |  |
| Assistant Project Managers |  |
| Civil |  |
| Mechanical |  |
| Structural |  |
| Instrumentation |  |
| Hydrology |  |
| IT |  |
| Planning & Scheduling Engineer |  |
| Procurement Officer |  |
| Finance & Accounts Officer |  |
| Quality & Safety Engineer |  |
| Communication & Community Officer |  |
| Senior Civil Engineers |  |
| Site Engineers |  |
| Civil |  |
| Mechanical |  |
| Structural |  |
| Instrumentation |  |
| Hydrology |  |
| SCADA Engineers |  |
| IoT Engineers |  |
| Data Analysts |  |
| Electrical Engineers |  |
| Technicians |  |
| GIS |  |
| CAD |  |
| Surveyors |  |
| Lab Technicians |  |
| Site Supervisors |  |
| Skilled Workers |  |
| Pipe Fitters |  |
| Welders |  |
| Masons |  |
| Semi-skilled Workers |  |
| Helpers |  |
| Assistants |  |
| Machine Operators |  |
| Excavator | 50000 |
| Roller | 25000 |
| Crane | 50000 |
| Suppliers |  |
| Vendors |  |
| Safety Officers |  |
| Transport & Logistics Staff |  |
| Software Developers |  |
| Database Administrators |  |
| Cybersecurity Experts |  |
| System Integrators |  |
| Technical Support Staff |  |
| Office Administrator |  |
| Clerical Assistants |  |
| Drivers |  |
| Security Staff |  |
| Housekeeping |  |
| Support Staff |  |

## Schedule

| ID | WBS | Task | Duration | Start | Finish | Predecessors | Constraint |
| --- | --- | --- | --- | --- | --- | --- | --- |
| 1 | 1 | **SMART CITY WATER SUPPLY** | 647d | 2025-11-03 | 2028-04-25 |  |  |
| 2 | 1.1 | **1. Project Initiation & Planning** | 33d | 2025-11-03 | 2025-12-17 |  |  |
| 3 | 1.1.1 | 1.1 Define project objectives and scope | 2d | 2025-11-03 | 2025-11-04 |  | start no earlier than 2025-10-15 |
| 4 | 1.1.2 | 1.2 Identify stakeholders and form project team | 3d | 2025-11-05 | 2025-11-07 | 3 | start no earlier than 2025-10-17 |
| 5 | 1.1.3 | 1.3 Approvals from PMC and Smart City Mission | 3d | 2025-11-05 | 2025-11-07 | 3 | start no earlier than 2025-10-18 |
| 6 | 1.1.4 | 1.4 Site survey and baseline data collection | 14d | 2025-11-10 | 2025-11-27 | 5 | start no earlier than 2025-10-21 |
| 7 | 1.1.5 | 1.5 Prepare project schedule and budget plan | 14d | 2025-11-28 | 2025-12-17 | 6 | start no earlier than 2025-10-28 |
| 8 | 1.2 | **2. Design & Engineering** | 51d | 2025-12-18 | 2026-02-26 |  | start no earlier than 2025-11-05 |
| 9 | 1.2.1 | 2.1 Hydraulic and network design for Zone-III | 30d | 2025-12-18 | 2026-01-28 | 7 |  |
| 10 | 1.2.2 | 2.2 Smart meter and IoT system architecture | 30d | 2025-12-18 | 2026-01-28 | 7 | start no earlier than 2025-11-07 |
| 11 | 1.2.3 | 2.3 SCADA system design (data control & automation) | 30d | 2025-12-18 | 2026-01-28 | 7 | start no earlier than 2025-11-12 |
| 12 | 1.2.4 | 2.4 Civil infrastructure drawings (pipeline layout, valves, tanks) | 30d | 2025-12-18 | 2026-01-28 | 7 | start no earlier than 2025-11-15 |
| 13 | 1.2.5 | 2.5 Integration design between IT and civil systems | 14d | 2026-01-29 | 2026-02-17 | 12 | start no earlier than 2025-11-22 |
| 14 | 1.2.6 | 2.6 Design review and approvals | 7d | 2026-02-18 | 2026-02-26 | 13 | start no earlier than 2025-11-28 |
| 15 | 1.3 | **3. Procurement** | 52d | 2026-02-27 | 2026-05-11 |  | start no earlier than 2025-12-02 |
| 16 | 1.3.1 | 3.1 Prepare Bill of Quantities (BoQ) | 3d | 2026-02-27 | 2026-03-03 | 14 | start no earlier than 2025-12-02 |
| 17 | 1.3.2 | 3.2 Vendor selection and tendering | 7d | 2026-03-04 | 2026-03-12 | 16 | start no earlier than 2025-12-03 |
| 18 | 1.3.3 | 3.3 Procurement of pipes, meters, sensors, SCADA hardware | 28d | 2026-03-13 | 2026-04-21 | 17 | start no earlier than 2025-12-05 |
| 19 | 1.3.4 | 3.4 Procurement of IT infrastructure (servers, network, security) | 28d | 2026-03-13 | 2026-04-21 | 17 | start no earlier than 2025-12-12 |
| 20 | 1.3.5 | 3.5 Quality inspection and delivery management | 14d | 2026-04-22 | 2026-05-11 | 19 | start no earlier than 2025-12-17 |
| 21 | 1.4 | **4. Construction & Installation** | 150d | 2026-05-12 | 2026-12-07 |  | start no earlier than 2025-12-19 |
| 22 | 1.4.1 | 4.1 Excavation and pipe laying | 30d | 2026-05-12 | 2026-06-22 | 20 |  |
| 23 | 1.4.2 | 4.2 Construction of reservoirs, valve chambers, and pump houses | 90d | 2026-05-12 | 2026-09-14 | 20 | start no earlier than 2026-01-08 |
| 24 | 1.4.3 | 4.3 Installation of distribution lines and connections | 60d | 2026-05-12 | 2026-08-03 | 20 | start no earlier than 2026-02-19 |
| 25 | 1.4.4 | 4.4 Installation of smart water meters at households | 30d | 2026-09-15 | 2026-10-26 | 23 | start no earlier than 2026-02-26 |
| 26 | 1.4.5 | 4.5 Road restoration and site cleanup | 30d | 2026-10-27 | 2026-12-07 | 25 | start no earlier than 2026-04-02 |

| ID | WBS | Task | Duration | Start | Finish | Predecessors | Constraint |
| --- | --- | --- | --- | --- | --- | --- | --- |
| 27 | 1.5 | **5. System Integration (IoT & SCADA)** | 90d | 2026-12-08 | 2027-04-12 |  | start no earlier than 2026-05-14 |
| 28 | 1.5.1 | 5.1 Configuration of IoT sensors and smart meters | 30d | 2026-12-08 | 2027-01-18 | 26 |  |
| 29 | 1.5.2 | 5.2 SCADA software setup and dashboard creation | 30d | 2026-12-08 | 2027-01-18 | 26 | start no earlier than 2026-06-04 |
| 30 | 1.5.3 | 5.3 Data connectivity setup (communication networks) | 45d | 2026-12-08 | 2027-02-08 | 26 | start no earlier than 2026-06-25 |
| 31 | 1.5.4 | 5.4 Integration of SCADA, IoT, and billing systems | 30d | 2027-01-19 | 2027-03-01 | 28 | start no earlier than 2026-08-06 |
| 32 | 1.5.5 | 5.5 Cybersecurity and data privacy setup | 30d | 2027-03-02 | 2027-04-12 | 31 | start no earlier than 2026-08-22 |
| 33 | 1.6 | **6. Testing & Commissioning** | 77d | 2027-04-13 | 2027-07-28 |  |  |
| 34 | 1.6.1 | 6.1 Pressure and leakage testing of pipelines | 14d | 2027-04-13 | 2027-04-30 | 32 |  |
| 35 | 1.6.2 | 6.2 Calibration and testing of smart meters | 14d | 2027-05-03 | 2027-05-20 | 34 |  |
| 36 | 1.6.3 | 6.3 SCADA and IoT system performance testing | 14d | 2027-05-21 | 2027-06-09 | 35 |  |
| 37 | 1.6.4 | 6.4 Pilot run in select areas | 28d | 2027-06-10 | 2027-07-19 | 36 |  |
| 38 | 1.6.5 | 6.5 Final approval and system handover | 7d | 2027-07-20 | 2027-07-28 | 37 |  |
| 39 | 1.7 | **7. Training & Handover** | 180d | 2027-07-29 | 2028-04-05 |  |  |
| 40 | 1.7.1 | 7.1 Training of PMC staff and operators on SCADA and IoT systems | 90d | 2027-07-29 | 2027-12-01 | 38 |  |
| 41 | 1.7.2 | 7.2 Documentation and operation manuals | 60d | 2027-12-02 | 2028-02-23 | 40 |  |
| 42 | 1.7.3 | 7.3 Handover of system and assets to PMC | 30d | 2028-02-24 | 2028-04-05 | 41 |  |
| 43 | 1.7.4 | 7.4 Citizen awareness programs and feedback collection | 60d | 2027-07-29 | 2027-10-20 | 38 |  |
| 44 | 1.8 | **8. Monitoring & Evaluation** | 134d | 2027-10-21 | 2028-04-25 |  |  |
| 45 | 1.8.1 | 8.1 Continuous monitoring of water flow and leak detection | 30d | 2027-10-21 | 2027-12-01 | 43 |  |
| 46 | 1.8.2 | 8.2 Monthly performance reporting and KPI tracking | 60d | 2027-10-21 | 2028-01-12 | 43 |  |
| 47 | 1.8.3 | 8.3 Maintenance scheduling and system updates | 30d | 2028-01-13 | 2028-02-23 | 46 |  |
| 48 | 1.8.4 | 8.4 Audit of system efficiency and citizen satisfaction | 30d | 2028-02-24 | 2028-04-05 | 47 |  |
| 49 | 1.8.5 | 8.5 Final evaluation report submission | 14d | 2028-04-06 | 2028-04-25 | 48 |  |
